# 剑网3GMWeb用户需求及开发计划

Schedule from MS Project, 2008-12-29 to 2009-03-06, status date 2008-12-29, A marks actual dates.
Kingsoft Corporation

## Calendars

- Standard: Mon-Fri 08:00-12:00, 13:00-17:00; Sat-Sun off. Exceptions (off unless hours are given): 2009-02-08 08:00-12:00, 13:00-17:00.

## Resources

| Resource |
| --- |
| 邝思豪 |

## Schedule

| ID | WBS | Task | Duration | Start | Finish | Complete | Remaining | Baseline start | Baseline finish | Baseline duration | Baseline 1 start | Baseline 1 finish | Total slack | Constraint | Resources | Work | Actual work | Text1 | Text4 | Text5 | Text6 | Text2 |
| --- | --- | --- | --- | --- | --- | --- | --- | --- | --- | --- | --- | --- | --- | --- | --- | --- | --- | --- | --- | --- | --- | --- |
| 1 | 1 | **剑网3GMWEB系统** | 51d? | 2008-12-29 A | 2009-03-06 | 80% | 10.18d? | 2008-12-29 | 2009-02-08 | 31d? | 2008-12-29 | 2009-03-02 | 0d |  | 邝思豪 | 2960h | 939.2h | 周科 | 王梁 | 范征勇 | 吴观喜 |  |
| 2 | 1.1 | **操作需求** | 51d? | 2008-12-29 A | 2009-03-06 | 97% | 1.76d? | 2008-12-29 | 2009-02-08 | 31d? | 2008-12-29 | 2009-02-27 | 0d |  |  | 2176h | 939.2h |  |  |  |  |  |
| 3 | 1.1.1 | **瞬移** | 46d? | 2008-12-29 A | 2009-02-27 | 90% | 4.6d? | 2008-12-29 | 2008-12-31 | 3d? | 2008-12-29 | 2009-02-27 | 5d |  |  | 368h | 331.2h |  |  |  |  |  |
| 4 | 1.1.1.1 | 到角色（附身） | 46d | 2008-12-29 A | 2009-02-27 | 90% | 4.6d | 2008-12-29 | 2008-12-31 | 3d | 2008-12-29 | 2009-02-27 | 1d | finish no earlier than 2009-02-27 |  | 368h | 331.2h |  |  |  |  |  |
| 5 | 1.1.1.2 | 到坐标 | 6d? | 2009-02-20 A | 2009-02-27 | 90% | 0.6d? | 2008-12-29 | 2008-12-29 | 1d? | 2009-02-20 | 2009-02-27 | 1d | finish no earlier than 2009-02-27 |  |  |  |  |  |  |  |  |
| 6 | 1.1.2 | **强制下线** | 46d? | 2008-12-29 A | 2009-02-27 A | 100% |  | 2008-12-29 | 2008-12-31 | 3d? | 2008-12-29 | 2008-12-31 |  |  |  | 368h | 368h |  |  |  |  |  |
| 7 | 1.1.2.1 | 踢账号 | 46d | 2008-12-29 A | 2009-02-27 A | 100% |  | 2008-12-29 | 2008-12-31 | 3d | 2008-12-29 | 2008-12-31 |  | finish no earlier than 2009-02-27 | 邝思豪 | 368h | 368h |  |  |  |  |  |
| 8 | 1.1.2.2 | 踢角色 | 46d? | 2008-12-29 A | 2009-02-27 A | 100% |  | 2008-12-29 | 2008-12-29 | 1d? | 2008-12-29 | 2008-12-29 |  | finish no earlier than 2009-02-27 |  |  |  |  |  |  |  |  |
| 9 | 1.1.3 | **公告** | 3d? | 2008-12-29 A | 2008-12-31 | 75% | 0.75d? | 2008-12-29 | 2008-12-31 | 3d? | 2008-12-29 | 2008-12-31 | 48d |  |  | 24h | 24h |  |  |  |  |  |
| 10 | 1.1.3.1 | 在聊天频道中显示 | 3d | 2008-12-29 A | 2008-12-31 A | 100% |  | 2008-12-29 | 2008-12-31 | 3d | 2008-12-29 | 2008-12-31 |  | start no earlier than 2008-12-29 | 邝思豪 | 24h | 24h |  |  |  |  |  |
| 11 | 1.1.3.2 | 在客户端弹出窗口（非模态） | 1d? | 2008-12-29 | 2008-12-29 |  |  | 2008-12-29 | 2008-12-29 | 1d? | 2008-12-29 | 2008-12-29 | 46d |  |  |  |  |  |  |  |  |  |
| 12 | 1.1.4 | 密聊 | 3d | 2008-12-29 A | 2008-12-31 A | 100% |  | 2008-12-29 | 2008-12-31 | 3d | 2008-12-29 | 2008-12-31 |  | start no earlier than 2008-12-29 | 邝思豪 | 24h | 24h |  |  |  |  |  |
| 13 | 1.1.5 | **禁言/解禁** | 16d? | 2009-02-08 A | 2009-02-27 A | 100% |  | 2009-02-08 | 2009-02-08 | 1d? | 2009-02-08 | 2009-02-20 |  |  |  |  |  |  |  |  |  |  |
| 14 | 1.1.5.1 | 禁言 | 16d? | 2009-02-08 A | 2009-02-27 A | 100% |  | 2009-02-08 | 2009-02-08 | 1d? | 2009-02-08 | 2009-02-20 |  | finish no earlier than 2009-02-27 |  |  |  |  |  |  |  | 赵纯峰 |
| 15 | 1.1.5.2 | 解禁 | 16d? | 2009-02-08 A | 2009-02-27 A | 100% |  | 2009-02-08 | 2009-02-08 | 1d? | 2009-02-08 | 2009-02-20 |  | finish no earlier than 2009-02-27 |  |  |  |  |  |  |  | 赵纯峰 |
| 16 | 1.1.6 | 临时置换密码 | 1d? | 2008-12-29 A | 2008-12-29 A | 100% |  | 2008-12-29 | 2008-12-29 | 1d? | 2008-12-29 | 2008-12-29 |  |  |  |  |  |  |  |  |  |  |
| 17 | 1.1.7 | **冻结/解冻** | 51d? | 2008-12-29 A | 2009-03-06 | 96% | 1.96d? | 2008-12-29 | 2008-12-31 | 3d | 2008-12-29 | 2009-02-20 | 0d |  |  | 1392h | 192h |  |  |  |  |  |
| 18 | 1.1.7.1 | **冻结帐号** | 51d? | 2008-12-29 A | 2009-03-06 | 92% | 4.25d? | 2008-12-29 | 2008-12-31 | 3d | 2008-12-29 | 2008-12-31 | 0d |  | 邝思豪 | 408h | 8h |  |  |  |  | 赵纯峰 |
| 19 | 1.1.7.1.1 | 冻结单个帐号 | 1d? | 2008-12-29 A | 2008-12-29 A | 100% |  |  |  |  |  |  |  |  |  |  |  |  |  |  |  |  |
| 20 | 1.1.7.1.2 | 批量冻结帐号 | 5d? | 2009-02-28 A | 2009-03-06 | 90% | 0.5d? |  |  |  |  |  | 0d | finish no earlier than 2009-03-06 |  |  |  |  |  |  |  |  |
| 21 | 1.1.7.2 | **解冻帐号** | 51d? | 2008-12-29 A | 2009-03-06 | 92% | 4.25d? | 2008-12-29 | 2008-12-31 | 3d | 2008-12-29 | 2008-12-31 | 0d |  | 邝思豪 | 408h | 8h |  |  |  |  | 赵纯峰 |
| 22 | 1.1.7.2.1 | 解冻单个帐号 | 1d? | 2008-12-29 A | 2008-12-29 A | 100% |  |  |  |  |  |  |  |  |  |  |  |  |  |  |  |  |
| 23 | 1.1.7.2.2 | 批量解冻帐号 | 5d? | 2009-02-28 A | 2009-03-06 | 90% | 0.5d? |  |  |  |  |  | 0d | finish no earlier than 2009-03-06 |  |  |  |  |  |  |  |  |
| 24 | 1.1.7.3 | **冻结角色** | 51d? | 2008-12-29 A | 2009-03-06 | 92% | 4.25d? | 2008-12-29 | 2008-12-31 | 3d | 2009-02-02 | 2009-02-20 | 0d |  | 邝思豪 | 408h | 8h |  |  |  |  | 赵纯峰 |
| 25 | 1.1.7.3.1 | 冻结单个角色 | 1d? | 2008-12-29 A | 2008-12-29 A | 100% |  |  |  |  |  |  |  |  |  |  |  |  |  |  |  |  |
| 26 | 1.1.7.3.2 | 批量冻结角色 | 5d? | 2009-02-28 A | 2009-03-06 | 90% | 0.5d? |  |  |  |  |  | 0d | finish no earlier than 2009-03-06 |  |  |  |  |  |  |  |  |
| 27 | 1.1.7.4 | 解冻角色 | 21d | 2009-02-02 A | 2009-02-27 A | 100% |  | 2008-12-29 | 2008-12-31 | 3d | 2009-02-02 | 2009-02-20 |  | finish no earlier than 2009-02-27 | 邝思豪 | 168h | 168h |  |  |  |  | 赵纯峰 |

Notes:
- 4: 已实现跨地图瞬移 / 2009/02/27 质检通过
- 5: 未实现跨地图瞬移（GMWEB未有界面） / 瞬移到位置：没有，网站须提供要瞬移到哪个场景 / 2009/02/27 质检通过
- 7: 2009/02/27 质检通过
- 8: 2009/02/27 质检通过
- 10: 公告内容添加超连接。如：<W全区例行维护公告/http://jx3.xoyo.com>：X月X日X时将会进行全区例行维护,请各位玩家相互转告 / 2009/02/27 质检通过
- 12: 2009/02/27 质检通过
- 14: 通过角色+区服，禁止角色在任一频道发言 / 2009/02/27 质检通过
- 15: 2009/02/27 质检通过
- 16: 2009/02/27 质检通过
- 18: 需2种方式实现： / 1、直接输入帐号进行冻结。 / 2、输入角色名、区服，系统自动查询对应的帐号，进行帐号冻结
- 19: 2009/02/27 质检通过
- 22: 2009/02/27 质检通过
- 24: 输入角色、区服进行角色冻结，并解冻前无法登陆游戏 角色强制下线，无法再登陆，对应帐号下其他角色不受影响
- 25: 2009/02/27 质检通过
- 27: 2009/02/27 质检通过

| ID | WBS | Task | Duration | Start | Finish | Complete | Baseline start | Baseline finish | Baseline duration | Baseline 1 start | Baseline 1 finish | Total slack | Constraint | Work | Text3 |
| --- | --- | --- | --- | --- | --- | --- | --- | --- | --- | --- | --- | --- | --- | --- | --- |
| 28 | 1.2 | **查询需求** | 1d? | 2008-12-29 A | 2008-12-29 A | 100% | 2008-12-29 | 2008-12-29 | 1d? | 2008-12-29 | 2008-12-29 |  |  |  |  |
| 29 | 1.2.1 | 帐号信息查询 | 1d? | 2008-12-29 A | 2008-12-29 A | 100% | 2008-12-29 | 2008-12-29 | 1d? | 2008-12-29 | 2008-12-29 |  |  |  |  |
| 30 | 1.2.2 | **帐号角色互查** | 1d? | 2008-12-29 A | 2008-12-29 A | 100% | 2008-12-29 | 2008-12-29 | 1d? | 2008-12-29 | 2008-12-29 |  |  |  |  |
| 31 | 1.2.2.1 | 通过帐号查询角色 | 1d? | 2008-12-29 A | 2008-12-29 A | 100% | 2008-12-29 | 2008-12-29 | 1d? | 2008-12-29 | 2008-12-29 |  |  |  |  |
| 32 | 1.2.2.2 | 通过角色名查询帐号 | 1d? | 2008-12-29 A | 2008-12-29 A | 100% | 2008-12-29 | 2008-12-29 | 1d? | 2008-12-29 | 2008-12-29 |  |  |  |  |
| 33 | 1.2.3 | 通行证信息显示 | 1d? | 2008-12-29 A | 2008-12-29 A | 100% | 2008-12-29 | 2008-12-29 | 1d? | 2008-12-29 | 2008-12-29 |  |  |  |  |
| 34 | 1.3 | 留言板信息回复 | 47d? | 2008-12-29 | 2009-03-02 |  | 2008-12-29 | 2009-01-09 | 10d? | 2008-12-29 | 2009-03-02 | 4d | finish no earlier than 2009-03-02 | 376h | 胡长银,王海银 |

Notes:
- 29: 2009/02/27 质检通过
- 32: 2009/02/27 质检通过
- 33: 2009/02/27 质检通过
- 34: 玩家在游戏提交的BUG、建议、求助在GM系统显示、并可以进行回复 / 回复后在留言板前台显示（如开发时间不够可以临时使用聊天频道显示） / 界面设计与王海银联系。 / *客户端关于 运营数据库的IP配置等信息。
